# 电解液充电能力评估（一 阶段）

Schedule from a web Gantt chart, 2025-12-03 to 2026-02-27.
Saturdays and Sundays are off

## Schedule

| ID | WBS | Task | Duration | Start | Finish | Predecessors | Complete | inPeople | Status |
| --- | --- | --- | --- | --- | --- | --- | --- | --- | --- |
| 2 | 1 | 配方空间确认 | 1d | 2025-12-03 | 2025-12-03 |  | 100% | 刘佛林 | done |
| 3 | 2 | **平台工作（本征参数测量）** | 36d | 2025-12-09 | 2026-01-27 |  | 4% |  |  |
| 4 | 2.1 | **电解液配置（高通量）** | 36d | 2025-12-09 | 2026-01-27 |  | 4% | 邢玉泽 |  |
| 5 | 2.1.1 | 批次0（EL1~EL15） | 5d | 2025-12-09 | 2025-12-15 |  | 100% |  | done |
| 6 | 2.1.2 | 批次1 | 7d | 2025-12-16 | 2025-12-24 | 5 |  |  |  |
| 7 | 2.1.3 | 批次2 | 6d | 2025-12-25 | 2026-01-01 | 6 |  |  | waiting |
| 8 | 2.1.4 | 批次3 | 6d | 2026-01-02 | 2026-01-09 | 7 |  |  | waiting |
| 9 | 2.1.5 | 批次4 | 6d | 2026-01-12 | 2026-01-19 | 8 |  |  | waiting |
| 10 | 2.1.6 | 批次5 | 6d | 2026-01-20 | 2026-01-27 | 9 |  |  | waiting |
| 11 | 3 | **方法类工作（提升准确性&通量）** | 44d | 2025-12-09 | 2026-02-06 |  | 5% |  |  |
| 12 | 3.1 | 迁移数方法可靠性验证 | 9d | 2025-12-09 | 2025-12-19 |  | 40% | 李岩岩 |  |
| 13 | 3.2 | 扩散系数方法在羧酸酯体系优化 | 10d | 2025-12-15 | 2025-12-26 |  |  | 孙宗杰 | waiting |
| 14 | 3.3 | 扩散系数高通量数据处理 | 16d | 2025-12-19 | 2026-01-09 |  |  | 孙宗杰 | waiting |
| 15 | 3.4 | **迁移数、电极电势、扩散系数采集（手动）** | 35d | 2025-12-22 | 2026-02-06 |  |  | 李岩岩 | waiting |
| 16 | 3.4.1 | 批次0（EL1~EL15） | 5d | 2025-12-22 | 2025-12-26 | 12 |  |  | waiting |
| 17 | 3.4.2 | 批次1 | 7d | 2025-12-29 | 2026-01-06 |  |  |  | waiting |
| 18 | 3.4.3 | 批次2 | 7d | 2026-01-05 | 2026-01-13 |  |  |  | waiting |
| 19 | 3.4.4 | 批次3 | 7d | 2026-01-13 | 2026-01-21 |  |  |  | waiting |
| 20 | 3.4.5 | 批次4 | 7d | 2026-01-21 | 2026-01-29 |  |  |  | waiting |
| 21 | 3.4.6 | 批次5 | 7d | 2026-01-29 | 2026-02-06 |  |  |  | waiting |
| 22 | 4 | **模型工作（参数模型、电化学仿真）** | 62d | 2025-12-04 | 2026-02-27 |  | 16% |  |  |
| 23 | 4.1 | **仿真模型对标优化** | 27d | 2025-12-04 | 2026-01-09 |  | 33% | 夏习文; 刘荣康 |  |
| 24 | 4.1.1 | 电性能对标数据收集（EL1~EL15） | 17d | 2025-12-04 | 2025-12-26 |  | 60% |  |  |
| 25 | 4.1.2 | 电迁移、扩散电流拆分 | 14d | 2025-12-08 | 2025-12-25 |  | 40% |  |  |
| 26 | 4.1.3 | 基于本征参数的模型调优 | 17d | 2025-12-18 | 2026-01-09 |  |  |  | waiting |

Notes:
- 2: 基于确定配方物质下的溶剂比例、盐浓度及电极体系变量
- 5: 涵盖MID设计体系（部分能够得到实际充电能力）
- 6: ~10ea
- 7: ~10ea
- 8: ~10ea
- 9: ~10ea
- 10: ~10ea
- 24: MID提供ALP数据，XM完成相关能力建设及对标

| ID | WBS | Task | Duration | Start | Finish | Predecessors | inPeople | Status |
| --- | --- | --- | --- | --- | --- | --- | --- | --- |
| 27 | 4.2 | **参数模型建设（基于 5 元配方）** | 29d | 2026-01-05 | 2026-02-12 |  | 孙宗杰 | waiting |
| 28 | 4.2.1 | 电导率模型 | 16d | 2026-01-05 | 2026-01-26 |  |  | waiting |
| 29 | 4.2.2 | 扩散系数模型 | 11d | 2026-01-26 | 2026-02-09 |  |  | waiting |
| 30 | 4.2.3 | 迁移数模型（视情况） | 11d | 2026-01-29 | 2026-02-12 |  |  | waiting |
| 31 | 4.3 | 基于参数模型的性能预测 | 11d | 2026-02-13 | 2026-02-27 | 27, 23 | 刘荣康; 孙宗杰 | waiting |
